# ex3

Schedule from MS Project, 2024-10-10 to 2026-05-08, status date 2025-09-25, costs in $, A marks actual dates.

## Calendars

- Standard: Mon-Fri 08:00-12:00, 13:00-17:00; Sat-Sun off.

## Resources

| Resource | Group | Rate |
| --- | --- | --- |
| Architect | Consultant | 9 |
| Draftsperson | Staff | 7 |
| Building Clerk | Staff | 8 |
| Supervisor | Staff | 12 |
| Rigger | Wages | 5 |
| Boilermaker | Wages | 5 |
| Welder | Wages | 6 |
| Carpenter | Wages | 7 |
| Painter | Wages | 6 |
| Labourer | Wages | 6 |
| Driver | Wages | 8 |
| No Barrier Fencing | Contractor | 3 |
| Rock Solid Concrete | Contractor | 4 |
| Listen Ear Audio | Contractor | 5 |
| In Focus Video | Contractor | 5 |
| Pure Grass Turf | Contractor | 5 |
| Building Inspector | Government | 5 |
| High Jib Crane | Equipment | 57 |
| Grader | Equipment | 6 |
| Air Compressor | Equipment | 7 |
| Utility | Equipment | 5 |
| Electrician | Staff | 7 |
| Plumber | Staff | 5 |
| Astro Turf | Material | 12 |
| Paint | Ute | 20 |
| Tax |  |  |
| Bonus |  |  |
| Part Time Fee |  |  |
| Logictis Cost |  |  |

## Schedule

| ID | WBS | Task | Type | Duration | Start | Finish | Predecessors | Complete | Remaining | Total slack | Free slack | Resources | Work | Actual work | Cost | Actual cost |
| --- | --- | --- | --- | --- | --- | --- | --- | --- | --- | --- | --- | --- | --- | --- | --- | --- |
| 1 | 1 | **Planning** |  | 88d | 2024-10-10 A | 2025-02-10 A |  | 100% |  |  |  |  | 648h | 648h | 5,500 | 5,500 |
| 2 | 1.1 | Creation architectural plans |  | 12w | 2024-10-10 A | 2025-01-01 A |  | 100% |  |  |  | Architect; Building Clerk [200%]; Draftsperson [25%] | 360h | 360h | 2,880 | 2,880 |
| 3 | 1.2 | Submit plans for approval |  | 1mo | 2025-01-02 A | 2025-01-29 A | 2 | 100% |  |  |  | Architect | 160h | 160h | 1,440 | 1,440 |
| 4 | 1.3 | Order materials |  | 8d | 2025-01-30 A | 2025-02-10 A | 3 | 100% |  |  |  | Draftsperson; Building Clerk | 128h | 128h | 960 | 960 |
| 5 | 1.4 | Planning Completed | milestone | 0d | 2025-02-10 A | 2025-02-10 A | 2, 3, 4 | 100% |  |  |  | Part Time Fee; Bonus |  |  | 220 | 220 |
| 6 | 2 | **Site Works** |  | 27d | 2025-02-11 A | 2025-03-19 A |  | 100% |  |  |  |  | 1056h | 1056h | 8,304 | 8,304 |
| 7 | 2.1 | Erect fencing |  | 3d | 2025-02-11 A | 2025-02-13 A | 5 | 100% |  |  |  | No Barrier Fencing | 24h | 24h | 72 | 72 |
| 8 | 2.2 | Erect site building |  | 4d | 2025-02-14 A | 2025-02-19 A | 7 | 100% |  |  |  | Supervisor; Labourer; Carpenter [400%] | 192h | 192h | 1,472 | 1,472 |
| 9 | 2.3 | Clear and level site |  | 3w | 2025-02-20 A | 2025-03-12 A | 8 | 100% |  |  |  | Supervisor; Grader [200%]; Driver [200%] | 600h | 600h | 4,800 | 4,800 |
| 10 | 2.4 | Prepare drainage infrastructure |  | 1w | 2025-03-13 A | 2025-03-19 A | 9 | 100% |  |  |  | Supervisor [50%]; Plumber [200%] | 100h | 100h | 640 | 640 |
| 11 | 2.5 | Prepare cabling infrastructure |  | 1w | 2025-03-13 A | 2025-03-19 A | 9 | 100% |  |  |  | Supervisor [50%]; Electrician [300%] | 140h | 140h | 1,080 | 1,080 |
| 12 | 2.6 | Site Works Completed | milestone | 0d | 2025-03-19 A | 2025-03-19 A | 7, 8, 9, 10, 11 | 100% |  |  |  | Logictis Cost |  |  | 240 | 240 |
| 13 | 3 | **Building Construction** |  | 249d | 2025-03-20 A | 2026-03-03 |  | 54% | 115.68d | 0d |  |  | 23272h | 18336h | 173,822 | 135,888 |
| 14 | 3.1 | Pour foundations |  | 4d | 2025-03-20 A | 2025-03-25 A | 12 | 100% |  |  |  | Rock Solid Concrete | 32h | 32h | 128 | 128 |
| 15 | 3.2 | Erect Steelwork |  | 3mo | 2025-03-26 A | 2025-06-17 A | 14 | 100% |  |  |  | Supervisor [50%]; Rigger [600%]; Boilermaker [600%]; Welder [500%]; Labourer [600%]; Driver [200%]; High Jib Crane; Utility | 13200h | 13200h | 100,800 | 100,800 |
| 16 | 3.3 | Erect vall |  | 8mo | 2025-06-18 A | 2026-01-27 | 15 | 45% | 4.4mo | 0d |  | Supervisor [50%]; Carpenter [700%]; Labourer [400%]; Driver; Grader; Air Compressor; Electrician [75%]; Plumber [25%] | 5280h | 5104h | 35,840 | 34,960 |
| 17 | 3.4 | Install roofing superstructure |  | 2w | 2026-01-28 | 2026-02-10 | 16 |  |  | 0d |  | Supervisor [50%]; Rigger [500%]; Boilermaker [500%]; Welder [300%]; Labourer [500%]; Driver [200%]; High Jib Crane; Utility; Air Compressor; Plumber [50%] | 1920h |  | 15,320 |  |
| 18 | 3.5 | Install roofing retraction mechanism |  | 1w | 2026-02-11 | 2026-02-17 | 17 |  |  | 0d |  | Supervisor [50%]; Welder; Boilermaker [200%]; Rigger [200%]; Electrician [200%]; Driver; High Jib Crane | 380h |  | 4,440 |  |
| 19 | 3.6 | Erect seating tiers |  | 3w | 2026-02-11 | 2026-03-03 | 18SS |  |  | 0d |  | Supervisor [50%]; Carpenter [800%]; Welder [200%]; Boilermaker [200%]; Labourer [500%]; Driver; Utility; Air Compressor | 2460h |  | 16,080 |  |
| 20 | 3.7 | Building Construction Completed | milestone | 0d | 2026-03-03 | 2026-03-03 | 14, 15, 16, 17, 18, 19 |  |  | 0d |  | Logictis Cost; Bonus |  |  | 1,214 |  |
| 21 | 4 | **Fit Out** |  | 14d | 2026-03-04 | 2026-03-23 |  |  |  | 0d |  |  | 1040h |  | 6,170 |  |
| 22 | 4.1 | Fit all windows and doors |  | 1w | 2026-03-04 | 2026-03-10 | 20 |  |  | 9d |  | Carpenter [500%]; Labourer [200%] | 160h |  | 1,040 |  |
| 23 | 4.2 | Install electrical cabling |  | 0.5w | 2026-03-04 | 2026-03-06 | 20 |  |  | 3.5d | 0d | Electrician [300%]; Labourer [200%] | 80h |  | 520 |  |
| 24 | 4.3 | Install electrical fittings and fixtures |  | 0.67w | 2026-03-06 | 2026-03-11 | 23 |  |  | 8.17d |  | Electrician [300%] | 80h |  | 560 |  |
| 25 | 4.4 | Install all plumbing |  | 1w | 2026-03-04 | 2026-03-10 | 20 |  |  | 6.5d | 0d | Labourer [200%]; Plumber [200%] | 160h |  | 880 |  |
| 26 | 4.5 | Install plumbing fixtures and fittings |  | 0.5w | 2026-03-11 | 2026-03-13 | 25 |  |  | 6.5d |  | Plumber [200%] | 40h |  | 200 |  |
| 27 | 4.6 | Lay astro turf |  | 1w | 2026-03-04 | 2026-03-10 | 20 |  |  | 9d |  | Pure Grass Turf | 40h |  | 200 |  |
| 28 | 4.7 | Erect handrails an fencing |  | 1w | 2026-03-04 | 2026-03-10 | 20 |  |  | 0d |  | Boilermaker [400%]; Welder [200%] | 160h |  | 880 |  |
| 29 | 4.8 | Paint rooms, fixtures, fittings, etc. |  | 0.2mo | 2026-03-11 | 2026-03-16 | 28 |  |  | 0d |  | Painter [500%] | 160h |  | 960 |  |
| 30 | 4.9 | Install PA system |  | 2d | 2026-03-06 | 2026-03-10 | 23 |  |  | 4.5d |  | Listen Ear Audio | 16h |  | 80 |  |
| 31 | 4.10 | Install video imaging equipment |  | 3d | 2026-03-06 | 2026-03-11 | 23 |  |  | 3.5d |  | In Focus Video | 24h |  | 120 |  |
| 32 | 4.11 | Fit out control room |  | 1w | 2026-03-17 | 2026-03-23 | 29, 30, 31 |  |  | 0d |  | Electrician [200%]; In Focus Video; Listen Ear Audio | 120h |  | 680 |  |
| 33 | 4.12 | Fit Out Completed | milestone | 0d | 2026-03-23 | 2026-03-23 | 22, 23, 24, 25, 26, 27, 28, 29, 30, 31, 32 |  |  | 0d |  | Tax |  |  | 50 |  |

| ID | WBS | Task | Type | Duration | Start | Finish | Predecessors | Total slack | Resources | Work | Cost |
| --- | --- | --- | --- | --- | --- | --- | --- | --- | --- | --- | --- |
| 34 | 5 | **Commissioning** |  | 33.5d | 2026-03-24 | 2026-05-08 |  | 0d |  | 400h | 3,340 |
| 35 | 5.1 | Test roof mechanism |  | 1w | 2026-03-24 | 2026-03-30 | 33 | 0d | Electrician; Rigger [200%]; Supervisor | 120h | 960 |
| 36 | 5.2 | Test PA system |  | 2d | 2026-03-24 | 2026-03-25 | 33 | 3d | Listen Ear Audio | 16h | 80 |
| 37 | 5.3 | Test video imaging equipment |  | 2d | 2026-03-24 | 2026-03-25 | 33 | 3d | In Focus Video | 16h | 80 |
| 38 | 5.4 | Test control room equipment |  | 5w | 2026-03-31 | 2026-05-04 | 35, 36, 37 | 0d | Architect; Electrician [20%]; In Focus Video [20%]; Listen Ear Audio; Supervisor [200%] | 200h | 1,520 |
| 39 | 5.5 | Obtain official occupancy |  | 1d | 2026-05-05 | 2026-05-05 | 38 | 0d | Architect; Building Clerk; Supervisor | 24h | 232 |
| 40 | 5.6 | Obtain safety certification |  | 2d | 2026-05-06 | 2026-05-07 | 39 | 0d | Supervisor | 16h | 192 |
| 41 | 5.7 | Official opening |  | 0.5d | 2026-05-08 | 2026-05-08 | 40 | 0d | Supervisor [200%] | 8h | 96 |
| 42 | 5.8 | Commissioning Completed | milestone | 0d | 2026-05-08 | 2026-05-08 | 35, 36, 37, 38, 39, 40, 41 | 0d | Bonus |  | 180 |
